# Veteran Connect Post-2026 PI Claim Starter Pack MVP

Schedule from ProjectLibre, 2026-05-11 to 2026-11-16.

## Calendars

- Standard[Imported]: Mon-Fri 08:00-12:00, 13:00-17:00; Sat-Sun off.

## Resources

| Resource | Group |
| --- | --- |
| Unassigned |  |
| Product / Compliance | MVP Build |
| Cloud / DevOps | MVP Build |
| Backend | MVP Build |
| Web | MVP Build |
| AI / Knowledge | MVP Build |
| Documents | MVP Build |
| Mobile | MVP Build |
| Security / QA | MVP Build |
| Pilot / Operations | MVP Build |

## Schedule

| ID | WBS | Task | Type | Duration | Start | Finish | Predecessors | Complete | Baseline start | Baseline finish | Constraint | Resources |
| --- | --- | --- | --- | --- | --- | --- | --- | --- | --- | --- | --- | --- |
| 1 | 1 | **Phase 1: Product scope and compliance foundation** |  | 1d | 2026-05-11 | 2026-05-11 |  | 100% | 2026-05-11 | 2026-06-03 |  |  |
| 2 | 1.1 | Confirm MVP product definition |  | 1d | 2026-05-11 | 2026-05-11 |  | 100% | 2026-05-11 | 2026-05-20 |  |  |
| 3 | 1.2 | Confirm version 1 exclusions |  | 1d | 2026-05-11 | 2026-05-11 | 2 | 100% | 2026-05-11 | 2026-05-11 |  |  |
| 4 | 1.3 | Define supported post-2026 claim scenarios |  | 1d | 2026-05-11 | 2026-05-11 | 3 | 100% | 2026-05-12 | 2026-05-12 |  |  |
| 5 | 1.4 | Draft disclaimer and AI-use wording |  | 1d | 2026-05-11 | 2026-05-11 | 4 | 100% | 2026-05-13 | 2026-05-13 |  |  |
| 6 | 1.5 | Define first user journey |  | 1d | 2026-05-11 | 2026-05-11 | 5 | 100% | 2026-05-14 | 2026-05-14 |  |  |
| 7 | 1.6 | Define MVP feature list |  | 1d | 2026-05-11 | 2026-05-11 | 6 | 100% | 2026-05-15 | 2026-05-15 |  |  |
| 8 | 1.7 | Define first data objects |  | 1d | 2026-05-11 | 2026-05-11 | 7 | 100% | 2026-05-18 | 2026-05-18 | start no earlier than 2026-05-11 |  |
| 9 | 1.8 | Define Phase 1 acceptance criteria |  | 1d | 2026-05-11 | 2026-05-11 | 8 | 100% | 2026-05-19 | 2026-05-19 | start no earlier than 2026-05-11 |  |
| 10 | 1.9 | Review Phase 1 pack before build starts |  | 1d | 2026-05-11 | 2026-05-11 | 9 | 100% | 2026-05-20 | 2026-05-20 |  |  |
| 11 | 2 | **Phase 2: Google Cloud foundation** |  | 1d | 2026-05-11 | 2026-05-11 |  | 100% | 2026-06-04 | 2026-06-17 |  |  |
| 12 | 2.1 | Create Google Cloud dev/test/prod project structure |  | 1d | 2026-05-11 | 2026-05-11 | 10 | 100% | 2026-06-04 | 2026-06-05 |  | Cloud / DevOps |
| 13 | 2.2 | Enable core Google Cloud services |  | 1d | 2026-05-11 | 2026-05-11 | 12 | 100% | 2026-06-08 | 2026-06-08 |  | Cloud / DevOps |
| 14 | 2.3 | Configure IAM, service accounts and Secret Manager |  | 1d | 2026-05-11 | 2026-05-11 | 13 | 100% | 2026-06-09 | 2026-06-10 |  | Cloud / DevOps |
| 15 | 2.4 | Create baseline IAM/service account plan |  | 1d | 2026-05-11 | 2026-05-11 | 14 | 100% |  |  |  |  |
| 16 | 2.5 | Create dev service accounts |  | 1d | 2026-05-11 | 2026-05-11 | 15 | 100% |  |  |  |  |
| 17 | 2.6 | Verify dev service accounts |  | 1d | 2026-05-11 | 2026-05-11 | 16 | 100% |  |  |  |  |
| 18 | 2.7 | Create Secret Manager baseline plan |  | 1d | 2026-05-11 | 2026-05-11 | 17 | 100% |  |  |  |  |
| 19 | 2.8 | Create initial placeholder secrets |  | 1d | 2026-05-11 | 2026-05-11 | 18 | 100% |  |  |  |  |
| 20 | 2.9 | Save IAM and Secret Manager setup notes |  | 1d | 2026-05-11 | 2026-05-11 | 19 | 100% |  |  |  |  |
| 21 | 2.4 | Configure Firebase Authentication and App Check |  | 1d | 2026-05-11 | 2026-05-11 | 20 | 100% | 2026-06-11 | 2026-06-12 |  | Cloud / DevOps |
| 22 | 2.5 | Create Cloud Run API skeleton and CI/CD |  | 1d | 2026-05-11 | 2026-05-11 | 21 | 100% | 2026-06-15 | 2026-06-16 |  | Cloud / DevOps |
| 23 | 2.6 | Provision Cloud SQL PostgreSQL and Cloud Storage buckets |  | 1d | 2026-05-11 | 2026-05-11 | 22 | 100% | 2026-06-17 | 2026-06-17 |  | Cloud / DevOps |
| 24 | 2.13 | Connect Cloud Run API to Cloud SQL and Secret Manager |  | 1d | 2026-05-11 | 2026-05-11 | 23 | 100% |  |  |  |  |
| 25 | 2.M | Milestone: Phase 2 complete | milestone | 1d | 2026-05-11 | 2026-05-11 | 24 | 100% | 2026-06-17 | 2026-06-17 |  | Cloud / DevOps |

Notes:
- 1: MVP boundaries, post-2026 claim scenarios, disclaimers, privacy wording and first user journey are agreed.
- 2: Required before build starts
- 3: Locks out scoring, compensation estimates and outcome prediction
- 4: Defines new condition, worsening, new plus existing, evidence prep and unsure scenarios
- 5: Required before onboarding and AI outputs
- 6: Provides build path for wireframes and API design
- 7: Locks initial build scope
- 8: Feeds database schema planning
- 9: Defines done for Phase 1
- 10: Final gate before Phase 2 cloud setup
- 11: Cloud Run, Cloud SQL, Cloud Storage, Firebase Authentication, Secret Manager and CI/CD foundation are working in dev/test.
- 12: Set up initial environment separation and naming conventions. New Google Cloud project creation failed due to project quota. Plan B adopted: use existing project dva-sop-dev with logical environment prefixes vapi-dev, vapi-test and vapi-prod. Split into separate projects later after quota increase.
- 13: Enable Cloud Run, Cloud SQL, Cloud Storage, Secret Manager, Cloud Build, Artifact Registry, Vertex AI, Document AI, Logging and Monitoring.
- 14: Set least-privilege service accounts and store all secrets outside source control.
- 21: Set up auth for web/mobile and basic client abuse protection.
- 22: Deploy a minimal ASP.NET Core API to Cloud Run from source control.
- 23: Create private storage buckets and initial database instance.
- 25: Cloud Run, Cloud SQL, Cloud Storage, Firebase Authentication, Secret Manager and CI/CD foundation are working in dev/test.

| ID | WBS | Task | Type | Duration | Start | Finish | Predecessors | Complete | Baseline start | Baseline finish | Resources |
| --- | --- | --- | --- | --- | --- | --- | --- | --- | --- | --- | --- |
| 26 | 3 | **Phase 3: Core backend and database** |  | 1d | 2026-05-12 | 2026-05-12 |  | 100% | 2026-06-18 | 2026-07-15 |  |
| 27 | 3.1 | Create database schema and migrations |  | 1d | 2026-05-12 | 2026-05-12 | 25 | 100% | 2026-06-18 | 2026-06-22 | Backend |
| 28 | 3.2 | Implement Firebase token verification and user service |  | 1d | 2026-05-12 | 2026-05-12 | 27 | 100% | 2026-06-23 | 2026-06-25 | Backend |
| 29 | 3.3 | Build claim workspace API (CRUD) |  | 1d | 2026-05-12 | 2026-05-12 | 28 | 100% | 2026-06-26 | 2026-07-01 | Backend |
| 30 | 3.4 | Build condition and accepted-condition history APIs |  | 1d | 2026-05-12 | 2026-05-12 | 29 | 100% | 2026-07-02 | 2026-07-07 | Backend |
| 31 | 3.5 | Build guided question response API |  | 1d | 2026-05-12 | 2026-05-12 | 30 | 100% |  |  |  |
| 32 | 3.5 | Build evidence metadata and audit APIs |  | 1d | 2026-05-12 | 2026-05-12 | 31 | 100% | 2026-07-08 | 2026-07-10 | Backend |
| 33 | 3.7 | Build evidence upload URL API |  | 1d | 2026-05-12 | 2026-05-12 | 32 | 100% |  |  |  |
| 34 | 3.8 | Build evidence gap tracker API |  | 1d | 2026-05-12 | 2026-05-12 | 33 | 100% |  |  |  |
| 35 | 3.9 | Build AI draft metadata API |  | 1d | 2026-05-12 | 2026-05-12 | 34 | 100% |  |  |  |
| 36 | 3.10 | Build generated document metadata API |  | 1d | 2026-05-12 | 2026-05-12 | 35 | 100% |  |  |  |
| 37 | 3.11 | Refactor shared auth and ownership helpers |  | 1d | 2026-05-12 | 2026-05-12 | 36 | 100% |  |  |  |
| 38 | 3.12 | Create API smoke test script |  | 1d | 2026-05-12 | 2026-05-12 | 37 | 100% |  |  |  |
| 39 | 3.13 | Redeploy and verify Phase 3 backend |  | 1d | 2026-05-12 | 2026-05-12 | 38 | 100% |  |  |  |
| 40 | 3.6 | Add backend tests and API documentation |  | 1d | 2026-05-12 | 2026-05-12 | 39 | 100% | 2026-07-13 | 2026-07-15 | Backend |
| 41 | 3.M | Milestone: Phase 3 complete | milestone | 1d | 2026-05-12 | 2026-05-12 | 40 | 100% | 2026-07-15 | 2026-07-15 | Backend |
| 42 | 4 | **Phase 4: Web MVP shell** |  | 1d? | 2026-05-12 | 2026-05-12 | 40 | 100% | 2026-07-16 | 2026-08-05 |  |
| 43 | 4.1 | Create Next.js app scaffolding and routing |  | 1d | 2026-05-12 | 2026-05-12 | 41 | 100% |  |  |  |
| 44 | 4.2 | Configure web app environment variables |  | 1d | 2026-05-12 | 2026-05-12 | 43 | 100% |  |  |  |
| 45 | 4.3 | Connect Firebase web authentication |  | 1d | 2026-05-12 | 2026-05-12 | 44 | 100% |  |  |  |
| 46 | 4.4 | Build login and session UI |  | 1d | 2026-05-12 | 2026-05-12 | 45 | 100% |  |  |  |
| 47 | 4.5 | Build dashboard and claim workspace list |  | 1d | 2026-05-12 | 2026-05-12 | 46 | 100% |  |  |  |
| 48 | 4.6 | Build new claim and pathway selector |  | 1d | 2026-05-12 | 2026-05-12 | 47 | 100% |  |  |  |
| 49 | 4.7 | Build claim workspace detail page |  | 1d | 2026-05-12 | 2026-05-12 | 48 | 100% |  |  |  |
| 50 | 4.8 | Build condition intake UI |  | 1d | 2026-05-12 | 2026-05-12 | 49 | 100% |  |  |  |
| 51 | 4.9 | Build accepted-condition history UI |  | 1d | 2026-05-12 | 2026-05-12 | 50 | 100% |  |  |  |
| 52 | 4.10 | Build guided question response UI |  | 1d | 2026-05-12 | 2026-05-12 | 51 | 100% |  |  |  |
| 53 | 4.11 | Build evidence checklist shell |  | 1d | 2026-05-12 | 2026-05-12 | 52 | 100% |  |  |  |
| 54 | 4.12 | Build evidence metadata UI |  | 1d | 2026-05-12 | 2026-05-12 | 53 | 100% |  |  |  |
| 55 | 4.13 | Build evidence upload UI |  | 1d | 2026-05-12 | 2026-05-12 | 54 | 100% |  |  |  |
| 56 | 4.1 | Build evidence gap tracker UI |  | 1d | 2026-05-12 | 2026-05-12 | 55 | 100% | 2026-07-16 | 2026-07-17 | Web |
| 57 | 4.2 | Build AI draft review UI |  | 1d | 2026-05-12 | 2026-05-12 | 56 | 100% | 2026-07-20 | 2026-07-22 | Web |
| 58 | 4.3 | Build generated document list UI |  | 1d | 2026-05-12 | 2026-05-12 | 57 | 100% | 2026-07-23 | 2026-07-27 | Web |
| 59 | 4.4 | Add protected route handling |  | 1d | 2026-05-12 | 2026-05-12 | 58 | 100% | 2026-07-28 | 2026-07-30 | Web |
| 60 | 4.5 | Add API client service layer |  | 1d | 2026-05-12 | 2026-05-12 | 59 | 100% | 2026-07-31 | 2026-08-04 | Web |
| 61 | 4.6 | Add web smoke test checklist |  | 1d | 2026-05-12 | 2026-05-12 | 60 | 100% | 2026-08-05 | 2026-08-05 | Web |
| 62 | 4.M | Milestone: Phase 4 complete | milestone | 0d? | 2026-05-12 | 2026-05-12 | 61 | 100% | 2026-08-05 | 2026-08-05 | Web |

Notes:
- 26: Backend can create users, claims, conditions, accepted-condition history, evidence metadata and audit events.
- 27: Implement users, claim_workspaces, conditions, accepted_condition_history, evidence_items, question_responses, evidence_gaps, ai_outputs, generated_documents and audit_events.
- 28: Verify identity tokens and map Firebase users to internal users.
- 29: Create, list, read and update post-2026 claim workspaces.
- 30: Capture condition details and previous VEA/DRCA/MRCA accepted condition history where relevant.
- 32: Store evidence records and auditable user/system actions.
- 40: Add smoke tests, basic API contract docs and error handling.
- 41: Backend can create users, claims, conditions, accepted-condition history, evidence metadata and audit events.
- 42: A user can log in, create a claim workspace, select a pathway and enter basic condition details in the web app.
- 56: Set up the web app structure, protected routes and base layout.
- 57: Connect Firebase sign-in to the backend session flow.
- 58: Show claim workspaces and basic workspace status.
- 59: Implement the post-2026 scenario selector as the first key workflow screen.
- 60: Capture initial condition details and diagnosis status.
- 61: Show the initial evidence checklist placeholder linked to a claim workspace.
- 62: A user can log in, create a claim workspace, select a pathway and enter basic condition details in the web app.

| ID | WBS | Task | Type | Duration | Start | Finish | Predecessors | Complete | Baseline start | Baseline finish | Resources |
| --- | --- | --- | --- | --- | --- | --- | --- | --- | --- | --- | --- |
| 63 | 5 | **Phase 5: GARP M-aware question engine** |  | 1d | 2026-05-13 | 2026-05-13 | 61 | 100% | 2026-08-06 | 2026-09-02 |  |
| 64 | 5.1 | Define Phase 5 scope and safety boundary |  | 1d | 2026-05-13 | 2026-05-13 | 62 | 100% |  |  |  |
| 65 | 5.2 | Create question template model |  | 1d | 2026-05-13 | 2026-05-13 | 64 | 100% |  |  |  |
| 66 | 5.3 | Create GARP M-aware question group structure |  | 1d | 2026-05-13 | 2026-05-13 | 65 | 100% |  |  |  |
| 67 | 5.4 | Build reusable question renderer |  | 1d | 2026-05-13 | 2026-05-13 | 66 | 100% |  |  |  |
| 68 | 5.5 | Build diagnosis, symptoms and treatment question group |  | 1d | 2026-05-13 | 2026-05-13 | 67 | 100% |  |  |  |
| 69 | 5.6 | Build stability and treatment response question group |  | 1d | 2026-05-13 | 2026-05-13 | 68 | 100% |  |  |  |
| 70 | 5.7 | Build functional, lifestyle and work impact question group |  | 1d | 2026-05-13 | 2026-05-13 | 69 | 100% |  |  |  |
| 71 | 5.8 | Build worsening and previous compensation question group |  | 1d | 2026-05-13 | 2026-05-13 | 70 | 100% |  |  |  |
| 72 | 5.9 | Build evidence gaps and appointment preparation question group |  | 1d | 2026-05-13 | 2026-05-13 | 71 | 100% |  |  |  |
| 73 | 5.10 | Connect question engine to existing question response API |  | 1d | 2026-05-13 | 2026-05-13 | 72 | 100% |  |  |  |
| 74 | 5.11 | Fix GARP M backend question group mapping |  | 1d | 2026-05-13 | 2026-05-13 | 73 | 100% |  |  |  |
| 75 | 5.12 | Improve GARP M date picker controls |  | 1d | 2026-05-13 | 2026-05-13 | 74 | 100% |  |  |  |
| 76 | 5.13 | Fix condition intake diagnosis status and date picker |  | 1d | 2026-05-13 | 2026-05-13 | 75 | 100% |  |  |  |
| 77 | 5.14 | Standardise remaining web date picker controls |  | 1d | 2026-05-13 | 2026-05-13 | 76 | 100% |  |  |  |
| 78 | 5.15 | Add save and resume support |  | 1d | 2026-05-13 | 2026-05-13 | 77 | 100% |  |  |  |
| 79 | 5.16 | Add validation and missing-answer prompts |  | 1d | 2026-05-13 | 2026-05-13 | 78 | 100% |  |  |  |
| 80 | 5.1 | Build structured assessment summary screen |  | 1d | 2026-05-13 | 2026-05-13 | 79 | 100% | 2026-08-06 | 2026-08-10 | Product / Compliance |
| 81 | 5.2 | Add workspace detail links to question engine |  | 1d | 2026-05-13 | 2026-05-13 | 80 | 100% | 2026-08-11 | 2026-08-14 | Product / Compliance |
| 82 | 5.3 | Add backend/frontend smoke test checklist updates |  | 1d | 2026-05-13 | 2026-05-13 | 81 | 100% | 2026-08-17 | 2026-08-21 | Product / Compliance |
| 83 | 5.4 | Add Phase 5 documentation |  | 1d | 2026-05-13 | 2026-05-13 | 82 | 100% | 2026-08-24 | 2026-08-27 | Product / Compliance |
| 84 | 5.5 | Milestone: Phase 5 complete |  | 1d | 2026-05-13 | 2026-05-13 | 83 | 100% | 2026-08-28 | 2026-09-02 | Product / Compliance |
| 85 | 6 | **Phase 6: Evidence upload and gap tracker** |  | 1d? | 2026-05-14 | 2026-05-14 | 84 | 100% | 2026-09-03 | 2026-09-23 |  |
| 86 | 6.1 | Define Phase 6 scope and evidence safety boundary |  | 1d | 2026-05-14 | 2026-05-14 | 84 | 100% |  |  |  |
| 87 | 6.2 | Add workspace tool navigation panel |  | 1d | 2026-05-14 | 2026-05-14 | 86 | 100% |  |  |  |
| 88 | 6.3 | Audit existing evidence upload, metadata and gap routes |  | 1d | 2026-05-14 | 2026-05-14 | 87 | 100% |  |  |  |
| 89 | 6.4 | Audit backend evidence API and storage flow |  | 1d | 2026-05-14 | 2026-05-14 | 88 | 100% |  |  |  |
| 90 | 6.5 | Build signed upload and download URL flow |  | 1d | 2026-05-14 | 2026-05-14 | 89 | 100% |  |  |  |
| 91 | 6.6 | Build evidence item tagging and condition linking |  | 1d | 2026-05-14 | 2026-05-14 | 90 | 100% |  |  |  |
| 92 | 6.7 | Build evidence category and source tagging |  | 1d | 2026-05-14 | 2026-05-14 | 91 | 100% |  |  |  |
| 93 | 6.8 | Build evidence status workflow |  | 1d | 2026-05-14 | 2026-05-14 | 92 | 100% |  |  |  |
| 94 | 6.9 | Build evidence list and detail view improvements |  | 1d | 2026-05-14 | 2026-05-14 | 93 | 100% |  |  |  |
| 95 | 6.10 | Build evidence gap rules engine |  | 1d | 2026-05-14 | 2026-05-14 | 94 | 100% |  |  |  |
| 96 | 6.11 | Build gap dashboard and reminder prompts |  | 1d? | 2026-05-14 | 2026-05-14 | 95 | 100% |  |  |  |
| 97 | 6.12 | Connect evidence gaps to GARP M question answers |  | 1d | 2026-05-14 | 2026-05-14 | 96 | 100% |  |  |  |
| 98 | 6.1 | Connect evidence gaps to condition intake and accepted history |  | 1d | 2026-05-14 | 2026-05-14 | 97 | 100% | 2026-09-03 | 2026-09-07 | Backend |
| 99 | 6.2 | Add evidence upload validation and error handling |  | 1d | 2026-05-14 | 2026-05-14 | 98 | 100% | 2026-09-08 | 2026-09-10 | Backend |
| 100 | 6.3 | Add evidence download/view action |  | 1d | 2026-05-14 | 2026-05-14 | 99 | 100% | 2026-09-11 | 2026-09-15 | Backend |
| 101 | 6.4 | Add evidence smoke test checklist |  | 1d | 2026-05-14 | 2026-05-14 | 100 | 100% | 2026-09-16 | 2026-09-21 | Backend |
| 102 | 6.5 | Add Phase 6 documentation |  | 1d | 2026-05-14 | 2026-05-14 | 101 | 100% | 2026-09-22 | 2026-09-23 | Backend |
| 103 | 6.M | Milestone: Phase 6 complete | milestone | 1d | 2026-05-14 | 2026-05-14 | 102 | 100% | 2026-09-23 | 2026-09-23 | Backend |

Notes:
- 63: The app guides the user through structured questions and produces a useful evidence summary without calculating points.
- 80: Make question groups configurable instead of hard-coded in screen logic.
- 81: Capture condition identity, diagnosis status, symptoms, treatment and medications.
- 82: Collect structured daily life and work impact evidence in plain English.
- 83: Capture previous DVA decision/assessment context and what has changed.
- 84: Generate a structured summary from saved answers for later AI and document output.
- 85: Users can upload evidence, tag it, link it to conditions and see missing-evidence prompts.
- 98: Keep files private and access them through controlled signed URLs.
- 99: Let users categorise documents and attach them to a condition.
- 100: Track missing, uploaded, requested, confirmed and not-required states.
- 101: Flag missing diagnosis evidence, treatment evidence, previous assessment letters, doctor reports and worsening evidence.
- 102: Display evidence gaps in a veteran-friendly checklist view.
- 103: Users can upload evidence, tag it, link it to conditions and see missing-evidence prompts.

| ID | WBS | Task | Type | Duration | Start | Finish | Predecessors | Complete | Baseline start | Baseline finish | Resources |
| --- | --- | --- | --- | --- | --- | --- | --- | --- | --- | --- | --- |
| 104 | 7 | **Phase 6.5: Removal and archive controls** |  | 1d | 2026-05-14 | 2026-05-14 | 103 | 100% |  |  |  |
| 105 | 7.1 | Build evidence remove/archive button |  | 1d | 2026-05-14 | 2026-05-14 | 103 | 100% |  |  |  |
| 106 | 7.2 | Build uploaded file deletion flow |  | 1d | 2026-05-14 | 2026-05-14 | 105 | 100% |  |  |  |
| 107 | 7.3 | Build condition archive/remove flow |  | 1d | 2026-05-14 | 2026-05-14 | 106 | 100% |  |  |  |
| 108 | 7.4 | Ensure archived evidence is excluded from gaps and AI drafts |  | 1d | 2026-05-14 | 2026-05-14 | 107 | 100% |  |  |  |
| 109 | 7.5 | Add removal audit events |  | 1d | 2026-05-14 | 2026-05-14 | 108 | 100% |  |  |  |
| 110 | 7.6 | Add removal smoke test checklist |  | 1d | 2026-05-14 | 2026-05-14 | 109 | 100% |  |  |  |
| 111 | 7.7 | Milestone: Phase 6.5 complete |  | 1d | 2026-05-14 | 2026-05-14 | 110 | 100% |  |  |  |
| 112 | 7 | **Phase 7: AI/RAG knowledge base** |  | 17d | 2026-05-15 | 2026-06-08 | 111 |  | 2026-09-03 | 2026-10-07 |  |
| 113 | 8.1 | Create AI/RAG architecture and safety plan |  | 1d | 2026-05-15 | 2026-05-15 | 111 |  |  |  |  |
| 114 | 8.2 | Create approved source registry schema |  | 1d | 2026-05-18 | 2026-05-18 | 113 |  |  |  |  |
| 115 | 8.3 | Create approved source registry and knowledge base structure |  | 1d | 2026-05-19 | 2026-05-19 | 114 |  |  |  |  |
| 116 | 8.4 | Create source category taxonomy |  | 1d | 2026-05-20 | 2026-05-20 | 115 |  |  |  |  |
| 117 | 8.5 | Load GARP M, DVA reform references and internal templates |  | 1d | 2026-05-21 | 2026-05-21 | 116 |  |  |  |  |
| 118 | 8.6 | Create knowledge base seed content files |  | 1d | 2026-05-22 | 2026-05-22 | 117 |  |  |  |  |
| 119 | 8.7 | Create ingestion and metadata rules |  | 1d | 2026-05-25 | 2026-05-25 | 118 |  |  |  |  |
| 120 | 8.8 | Build RAG retrieval API |  | 1d | 2026-05-26 | 2026-05-26 | 119 |  |  |  |  |
| 121 | 8.9 | Build retrieval response with citations/source references |  | 1d | 2026-05-27 | 2026-05-27 | 120 |  |  |  |  |
| 122 | 8.10 | Build prompt templates and safety guardrails |  | 1d | 2026-05-28 | 2026-05-28 | 121 |  |  |  |  |
| 123 | 7.1 | Build AI draft request API |  | 1d | 2026-05-29 | 2026-05-29 | 122 |  | 2026-09-03 | 2026-09-08 | AI / Knowledge |
| 124 | 7.2 | Generate veteran statement and worsening summary drafts |  | 1d | 2026-06-01 | 2026-06-01 | 123 |  | 2026-09-09 | 2026-09-14 | AI / Knowledge |
| 125 | 7.3 | Generate doctor questions, evidence gap summary and doctor letter |  | 1d | 2026-06-02 | 2026-06-02 | 124 |  | 2026-09-15 | 2026-09-21 | AI / Knowledge |
| 126 | 7.4 | Add AI draft review, copy and save workflow |  | 1d | 2026-06-03 | 2026-06-03 | 125 |  | 2026-09-22 | 2026-09-25 | AI / Knowledge |
| 127 | 7.5 | Add AI/RAG audit logging |  | 1d | 2026-06-04 | 2026-06-04 | 126 |  | 2026-09-28 | 2026-10-01 | AI / Knowledge |
| 128 | 7.6 | Add AI/RAG smoke test checklist |  | 1d | 2026-06-05 | 2026-06-05 | 127 |  | 2026-10-02 | 2026-10-07 | AI / Knowledge |
| 129 | 7.M | Milestone: Phase 7 complete | milestone | 1d | 2026-06-08 | 2026-06-08 | 128 |  | 2026-10-07 | 2026-10-07 | AI / Knowledge |

Notes:
- 112: The app generates grounded drafts from user facts and approved knowledge only, with source references and review warnings.
- 123: Store source metadata, versioning, titles, URLs, summaries and approved excerpts/templates.
- 124: Seed the first approved knowledge collection and plain-English templates.
- 125: Retrieve relevant source material before asking Gemini to draft content.
- 126: Prevent outcome predictions, GARP scoring, fake medical facts and unsupported claims.
- 127: Create first AI drafting workflows from user-entered facts.
- 128: Create additional AI outputs for the starter pack and doctor prep workflow.
- 129: The app generates grounded drafts from user facts and approved knowledge only, with source references and review warnings.

| ID | WBS | Task | Type | Duration | Start | Finish | Predecessors | Baseline start | Baseline finish | Resources |
| --- | --- | --- | --- | --- | --- | --- | --- | --- | --- | --- |
| 130 | 8 | **Phase 8: Claim Starter Pack document generation** |  | 15d? | 2026-06-09 | 2026-06-29 |  | 2026-10-08 | 2026-10-28 |  |
| 131 | 8.1 | Design DOCX starter pack templates |  | 4d? | 2026-06-09 | 2026-06-12 | 103, 129 | 2026-10-08 | 2026-10-13 | Documents |
| 132 | 8.2 | Build document generation service |  | 4d? | 2026-06-15 | 2026-06-18 | 131 | 2026-10-14 | 2026-10-19 | Documents |
| 133 | 8.3 | Add PDF conversion and storage versioning |  | 3d? | 2026-06-19 | 2026-06-23 | 132 | 2026-10-20 | 2026-10-22 | Documents |
| 134 | 8.4 | Add document download signed URL flow |  | 2d? | 2026-06-24 | 2026-06-25 | 133 | 2026-10-23 | 2026-10-26 | Documents |
| 135 | 8.5 | Enforce reviewed-only content and test exports |  | 2d? | 2026-06-26 | 2026-06-29 | 134 | 2026-10-27 | 2026-10-28 | Documents |
| 136 | 8.M | Milestone: Phase 8 complete | milestone | 0d? | 2026-06-29 | 2026-06-29 | 135 | 2026-10-28 | 2026-10-28 | Documents |
| 137 | 9 | **Phase 9: Doctor guidance pack** |  | 10d? | 2026-06-30 | 2026-07-13 |  | 2026-10-29 | 2026-11-11 |  |
| 138 | 9.1 | Design doctor guidance pack template |  | 3d? | 2026-06-30 | 2026-07-02 | 136 | 2026-10-29 | 2026-11-02 | Documents |
| 139 | 9.2 | Build clinical question generation workflow |  | 3d? | 2026-07-03 | 2026-07-07 | 138 | 2026-11-03 | 2026-11-05 | Documents |
| 140 | 9.3 | Add doctor-specific disclaimer and review checklist |  | 2d? | 2026-07-08 | 2026-07-09 | 139 | 2026-11-06 | 2026-11-09 | Documents |
| 141 | 9.4 | Export and test doctor guidance pack |  | 2d? | 2026-07-10 | 2026-07-13 | 140 | 2026-11-10 | 2026-11-11 | Documents |
| 142 | 9.M | Milestone: Phase 9 complete | milestone | 0d? | 2026-07-13 | 2026-07-13 | 141 | 2026-11-11 | 2026-11-11 | Documents |
| 143 | 10 | **Phase 10: Admin knowledge and template manager** |  | 20d? | 2026-06-09 | 2026-07-06 |  | 2026-10-08 | 2026-11-04 |  |
| 144 | 10.1 | Build admin roles and access control |  | 3d? | 2026-06-09 | 2026-06-11 | 129 | 2026-10-08 | 2026-10-12 | Backend |
| 145 | 10.2 | Build source metadata manager |  | 4d? | 2026-06-12 | 2026-06-17 | 144 | 2026-10-13 | 2026-10-16 | Backend |
| 146 | 10.3 | Build question and document template editor |  | 5d? | 2026-06-18 | 2026-06-24 | 145 | 2026-10-19 | 2026-10-23 | Backend |
| 147 | 10.4 | Build prompt and disclaimer versioning |  | 4d? | 2026-06-25 | 2026-06-30 | 146 | 2026-10-26 | 2026-10-29 | Backend |
| 148 | 10.5 | Build knowledge base audit review view |  | 4d? | 2026-07-01 | 2026-07-06 | 147 | 2026-10-30 | 2026-11-04 | Backend |
| 149 | 10.M | Milestone: Phase 10 complete | milestone | 0d? | 2026-07-06 | 2026-07-06 | 148 | 2026-11-04 | 2026-11-04 | Backend |
| 150 | 11 | **Phase 11: Android and iOS app MVP** |  | 40d? | 2026-06-30 | 2026-08-24 |  | 2026-10-29 | 2026-12-23 |  |
| 151 | 11.1 | Create MAUI app shell and shared services |  | 5d? | 2026-06-30 | 2026-07-06 | 136 | 2026-10-29 | 2026-11-04 | Mobile |
| 152 | 11.2 | Integrate Firebase Authentication |  | 5d? | 2026-07-07 | 2026-07-13 | 151 | 2026-11-05 | 2026-11-11 | Mobile |
| 153 | 11.3 | Build dashboard and claim workspace screens |  | 6d? | 2026-07-14 | 2026-07-21 | 152 | 2026-11-12 | 2026-11-19 | Mobile |
| 154 | 11.4 | Build condition intake and question engine screens |  | 8d? | 2026-07-22 | 2026-07-31 | 153 | 2026-11-20 | 2026-12-01 | Mobile |
| 155 | 11.5 | Build evidence checklist and upload flow |  | 7d? | 2026-08-03 | 2026-08-11 | 154 | 2026-12-02 | 2026-12-10 | Mobile |
| 156 | 11.6 | Build AI draft review and document download screens |  | 6d? | 2026-08-12 | 2026-08-19 | 155 | 2026-12-11 | 2026-12-18 | Mobile |
| 157 | 11.7 | Complete Android and iOS device testing |  | 3d? | 2026-08-20 | 2026-08-24 | 156 | 2026-12-21 | 2026-12-23 | Mobile |
| 158 | 11.M | Milestone: Phase 11 complete | milestone | 0d? | 2026-08-24 | 2026-08-24 | 157 | 2026-12-23 | 2026-12-23 | Mobile |

Notes:
- 130: The app generates and stores a DOCX/PDF Post-2026 PI Claim Starter Pack using confirmed content only.
- 131: Create cover page, disclaimer, condition summary, evidence checklist, gap tracker, statement draft and review checklist sections.
- 132: Generate DOCX from structured claim workspace data and approved drafts.
- 133: Create PDF output and keep document versions in Cloud Storage.
- 134: Allow secure document download from the web/mobile clients.
- 135: Ensure only user-confirmed answers and approved AI drafts are exported.
- 136: The app generates and stores a DOCX/PDF Post-2026 PI Claim Starter Pack using confirmed content only.
- 137: The app generates a doctor-facing guidance pack with clinical questions and careful disclaimers.
- 138: Create a separate doctor-facing document structure.
- 139: Use condition facts and evidence gaps to prepare doctor appointment questions.
- 140: Make clear the document does not ask the doctor to provide legal advice or a DVA decision.
- 141: Generate DOCX/PDF and verify readability.
- 142: The app generates a doctor-facing guidance pack with clinical questions and careful disclaimers.
- 143: An admin can update sources, question wording, templates, prompts and disclaimers without app code changes.
- 144: Restrict knowledge/template editing to authorised admin users.
- 145: Manage approved source titles, URLs, version dates, notes and usage status.
- 146: Allow controlled updates to question text and document templates.
- 147: Version prompts and disclaimers used in AI and exported documents.
- 148: Show what source/template/prompt version was used for each AI output.
- 149: An admin can update sources, question wording, templates, prompts and disclaimers without app code changes.
- 150: Android and iOS can complete the main claim starter pack workflow against the same backend as the web app.
- 151: Set up cross-platform app navigation and backend client services.
- 152: Implement login/session flow for mobile.
- 153: Show workspaces and workspace status on mobile.
- 154: Support the key evidence collection workflow on mobile.
- 155: Upload evidence files/photos and show the gap tracker.
- 156: Review AI outputs and download generated packs.
- 157: Smoke test on real/simulator devices and fix platform-specific issues.
- 158: Android and iOS can complete the main claim starter pack workflow against the same backend as the web app.

| ID | WBS | Task | Type | Duration | Start | Finish | Predecessors | Baseline start | Baseline finish | Resources |
| --- | --- | --- | --- | --- | --- | --- | --- | --- | --- | --- |
| 159 | 12 | **Phase 12: Security, privacy and production hardening** |  | 30d? | 2026-06-30 | 2026-08-10 |  | 2026-10-29 | 2026-12-09 |  |
| 160 | 12.1 | Review RBAC enforcement and audit logging |  | 5d? | 2026-06-30 | 2026-07-06 | 136 | 2026-10-29 | 2026-11-04 | Security / QA |
| 161 | 12.2 | Build data export and deletion workflows |  | 5d? | 2026-07-07 | 2026-07-13 | 160 | 2026-11-05 | 2026-11-11 | Security / QA |
| 162 | 12.3 | Create backup and disaster recovery process |  | 4d? | 2026-07-14 | 2026-07-17 | 161 | 2026-11-12 | 2026-11-17 | Security / QA |
| 163 | 12.4 | Add rate limiting, monitoring and error alerts |  | 4d? | 2026-07-20 | 2026-07-23 | 162 | 2026-11-18 | 2026-11-23 | Security / QA |
| 164 | 12.5 | Add consent tracking and AI disclosure tracking |  | 4d? | 2026-07-24 | 2026-07-29 | 163 | 2026-11-24 | 2026-11-27 | Security / QA |
| 165 | 12.6 | Draft privacy policy, terms and support process |  | 4d? | 2026-07-30 | 2026-08-04 | 164 | 2026-11-30 | 2026-12-03 | Security / QA |
| 166 | 12.7 | Prepare penetration test and remediation buffer |  | 4d? | 2026-08-05 | 2026-08-10 | 165 | 2026-12-04 | 2026-12-09 | Security / QA |
| 167 | 12.M | Milestone: Phase 12 complete | milestone | 0d? | 2026-08-10 | 2026-08-10 | 166 | 2026-12-09 | 2026-12-09 | Security / QA |
| 168 | 13 | **Phase 13: Private pilot** |  | 30d? | 2026-08-25 | 2026-10-05 |  | 2026-12-24 | 2027-02-03 |  |
| 169 | 13.1 | Recruit and onboard private pilot users |  | 5d? | 2026-08-25 | 2026-08-31 | 149, 158, 167 | 2026-12-24 | 2026-12-30 | Pilot / Operations |
| 170 | 13.2 | Run support and feedback capture process |  | 5d? | 2026-09-01 | 2026-09-07 | 169 | 2026-12-31 | 2027-01-06 | Pilot / Operations |
| 171 | 13.3 | Test veteran claim-preparation workflow |  | 5d? | 2026-09-08 | 2026-09-14 | 170 | 2027-01-07 | 2027-01-13 | Pilot / Operations |
| 172 | 13.4 | Review doctor and advocate pack usefulness |  | 5d? | 2026-09-15 | 2026-09-21 | 171 | 2027-01-14 | 2027-01-20 | Pilot / Operations |
| 173 | 13.5 | Fix priority issues from pilot |  | 6d? | 2026-09-22 | 2026-09-29 | 172 | 2027-01-21 | 2027-01-28 | Pilot / Operations |
| 174 | 13.6 | Prepare pilot outcome report and go/no-go decision |  | 4d? | 2026-09-30 | 2026-10-05 | 173 | 2027-01-29 | 2027-02-03 | Pilot / Operations |
| 175 | 13.M | Milestone: Phase 13 complete | milestone | 0d? | 2026-10-05 | 2026-10-05 | 174 | 2027-02-03 | 2027-02-03 | Pilot / Operations |
| 176 | 14 | **Phase 14: Commercial launch preparation** |  | 30d? | 2026-10-06 | 2026-11-16 |  | 2027-02-04 | 2027-03-17 |  |
| 177 | 14.1 | Decide and implement billing/subscription model |  | 5d? | 2026-10-06 | 2026-10-12 | 175 | 2027-02-04 | 2027-02-10 | Pilot / Operations |
| 178 | 14.2 | Build organisation account model |  | 5d? | 2026-10-13 | 2026-10-19 | 177 | 2027-02-11 | 2027-02-17 | Pilot / Operations |
| 179 | 14.3 | Set up support inbox and help centre |  | 5d? | 2026-10-20 | 2026-10-26 | 178 | 2027-02-18 | 2027-02-24 | Pilot / Operations |
| 180 | 14.4 | Create marketing site and onboarding content |  | 5d? | 2026-10-27 | 2026-11-02 | 179 | 2027-02-25 | 2027-03-03 | Pilot / Operations |
| 181 | 14.5 | Prepare App Store and Play Store materials |  | 5d? | 2026-11-03 | 2026-11-09 | 180 | 2027-03-04 | 2027-03-10 | Pilot / Operations |
| 182 | 14.6 | Complete launch readiness and production operations |  | 5d? | 2026-11-10 | 2026-11-16 | 181 | 2027-03-11 | 2027-03-17 | Pilot / Operations |
| 183 | 14.M | Milestone: Phase 14 complete | milestone | 0d? | 2026-11-16 | 2026-11-16 | 182 | 2027-03-17 | 2027-03-17 | Pilot / Operations |

Notes:
- 159: The platform is suitable for a controlled private pilot with sensitive information under strict safeguards.
- 160: Verify all user actions and sensitive operations are permissioned and logged.
- 161: Allow user data export and deletion handling.
- 162: Set backups, restore procedures and recovery expectations.
- 163: Improve abuse protection and operational visibility.
- 164: Record accepted consent and AI-use disclosure versions.
- 165: Prepare launch/pilot legal-adjacent operational material for review.
- 166: Run security review preparation and fix priority findings.
- 167: The platform is suitable for a controlled private pilot with sensitive information under strict safeguards.
- 168: Pilot evidence shows the workflow is useful, understandable, safe and worth commercialising.
- 169: Bring in a small controlled group of veterans, doctors or advocates.
- 170: Collect structured feedback and support issues.
- 171: Measure whether users can complete the claim workspace and starter pack workflow.
- 172: Get feedback on clinical questions, pack clarity and disclaimers.
- 173: Resolve critical usability, safety, content and technical issues.
- 174: Summarise findings and decide what is required before commercial launch.
- 175: Pilot evidence shows the workflow is useful, understandable, safe and worth commercialising.
- 176: The product can onboard paying users, support them and operate reliably in production.
- 177: Add payment or subscription flow once the pilot value is proven.
- 178: Prepare for advocate/provider/organisation access if required.
- 179: Create operational support channels and self-help content.
- 180: Explain the product safely and clearly without overclaiming.
- 181: Prepare screenshots, copy, privacy details and review material.
- 182: Confirm monitoring, incident response, backups, support and release process.
- 183: The product can onboard paying users, support them and operate reliably in production.
